# GFURR.BBS.Master.Plan

How a schedule from MS Project changed from version to version. A marks actual dates.

## Version 1 (saved 2018-02-05)

| ID | WBS | Task | Duration | Start | Finish | Predecessors | Total float | Constraint |
| --- | --- | --- | --- | --- | --- | --- | --- | --- |
| 2 | 1 | **Location Logistics** | 8d | 2018-02-05 | 2018-02-14 |  | 0d |  |
| 3 |  | Reserve on Lyric | 3d | 2018-02-05 | 2018-02-07 |  |  |  |
| 4 |  | Site Visit | 1d | 2018-02-14 | 2018-02-14 | 5 |  |  |
| 5 |  | Sign Contract | 3d | 2018-02-08 | 2018-02-12 | 3 |  |  |
| 6 | 2 | **Summit Speakers** | 41d | 2018-02-05 | 2018-04-02 |  | 0d |  |
| 7 |  | Round 1 Invitations | 1d | 2018-02-05 | 2018-02-05 |  |  |  |
| 8 |  | Invitation Follow-up | 9d | 2018-02-05 | 2018-02-15 | 7 |  |  |
| 9 |  | Round 2 Invitations | 1d | 2018-02-19 | 2018-02-19 |  |  |  |
| 10 |  | Invitation Follow-up | 10d | 2018-02-19 | 2018-03-02 | 9 |  |  |
| 11 |  | Round 3 Invitations | 1d | 2018-03-05 | 2018-03-05 |  |  |  |
| 12 |  | Invitation Follow-up | 10d | 2018-03-05 | 2018-03-16 | 11 |  |  |
| 13 |  | Speaker Travel Logisitics | 41d | 2018-02-05 | 2018-04-02 |  |  |  |
| 14 |  | Speaker Bios and Photos | 40d | 2018-02-05 | 2018-03-30 |  |  |  |
| 15 | 3 | **Media Design** | 19d | 2018-02-02 | 2018-02-28 |  | 0d |  |
| 16 | 3.1 | **Contract Position Logistics** | 8d | 2018-02-02 | 2018-02-13 |  | 0d |  |
| 17 |  | Web, Video and Grphx Job Descriptions | 2d | 2018-02-02 | 2018-02-05 |  |  |  |
| 18 |  | Designer Submission | 1d | 2018-02-05 | 2018-02-05 |  |  |  |
| 19 |  | Designer Review and Selection | 2d | 2018-02-12 | 2018-02-13 |  |  |  |
| 20 | 3.2 | **Graphic Design** | 11d | 2018-02-13 | 2018-02-27 | 19 | 0d |  |
| 21 |  | Meet with Designer | 3d | 2018-02-14 | 2018-02-16 | 19, 22, 27 |  |  |
| 22 |  | Finalize List of Graphic Design Needs | 1d | 2018-02-13 | 2018-02-13 |  |  |  |
| 23 |  | Logo Design Process | 6d | 2018-02-19 | 2018-02-26 | 21 |  |  |
| 24 |  | Logo Final Approval | 1d | 2018-02-27 | 2018-02-27 | 23 |  |  |
| 25 | 3.3 | **Website Design** | 18d | 2018-02-05 | 2018-02-28 |  | 0d |  |
| 26 |  | Domain Purchase | 5d | 2018-02-05 | 2018-02-09 |  |  |  |
| 27 |  | Finalize List of Web Design Needs and Calendar | 1d | 2018-02-13 | 2018-02-13 |  |  |  |
| 28 |  | <New Task> | 1d? | 2018-02-05 | 2018-02-05 |  |  |  |
| 29 |  | Meet with Designer | 3d | 2018-02-14 | 2018-02-16 |  |  |  |
| 30 |  | Website Design Process | 7d | 2018-02-19 | 2018-02-27 | 29 |  |  |
| 31 |  | Website Final Approval | 1d | 2018-02-27 | 2018-02-27 | 30 |  |  |
| 32 |  | Website Launch | 1d | 2018-02-28 | 2018-02-28 | 31, 35 |  |  |
| 33 | 4 | **Marketing and Communications** | 46d | 2018-02-09 | 2018-04-13 |  | 0d |  |
| 34 | 4.1 | **Registration Process** | 46d | 2018-02-09 | 2018-04-13 |  | 0d |  |
| 35 |  | Registration Form Finalization | 5d | 2018-02-21 | 2018-02-27 |  |  |  |
| 36 | 4.1.2 | **Registration Report** | 46d | 2018-02-09 | 2018-04-13 |  | 0d |  |
| 37 |  | Registration Report 1 | 1d | 2018-02-09 | 2018-02-09 |  |  | start no earlier than 2018-02-09 |
| 38 |  | Registration Report 2 | 1d | 2018-02-16 | 2018-02-16 |  |  | start no earlier than 2018-02-16 |
| 39 |  | Registration Report 3 | 1d | 2018-02-23 | 2018-02-23 |  |  | start no earlier than 2018-02-23 |
| 40 |  | Registration Report 4 | 1d | 2018-03-02 | 2018-03-02 |  |  | start no earlier than 2018-03-02 |
| 41 |  | Registration Report 6 | 1d | 2018-03-16 | 2018-03-16 |  |  | start no earlier than 2018-03-16 |
| 42 |  | Registration Report 7 | 1d | 2018-03-23 | 2018-03-23 |  |  | start no earlier than 2018-03-23 |
| 43 |  | Registration Report 8 | 1d | 2018-03-30 | 2018-03-30 |  |  | start no earlier than 2018-03-30 |
| 44 |  | Registration Report 9 | 1d | 2018-04-06 | 2018-04-06 |  |  | start no earlier than 2018-04-06 |
| 45 |  | Registration Report 10 | 1d | 2018-04-13 | 2018-04-13 |  |  | start no earlier than 2018-04-13 |
| 46 |  | Public Relations | 1d? | 2018-02-09 | 2018-02-09 |  |  |  |
| 47 |  | Communications/Outreach | 1d? | 2018-02-09 | 2018-02-09 |  |  |  |
| 48 |  | University List | 1d? | 2018-02-09 | 2018-02-09 |  |  |  |
| 49 |  | VT and NRV List | 1d? | 2018-02-09 | 2018-02-09 |  |  |  |
| 50 |  | Business List | 1d? | 2018-02-09 | 2018-02-09 |  |  |  |
| 51 |  | Advertising Placement | 1d? | 2018-02-09 | 2018-02-09 |  |  |  |
| 52 |  | Food Services | 1d? | 2018-02-05 | 2018-02-05 |  |  |  |
| 53 |  | <New Task> | 1d? | 2018-02-05 | 2018-02-05 |  |  |  |
| 54 |  | Hotel Services | 1d? | 2018-02-05 | 2018-02-05 |  |  |  |
| 55 |  | Reserve Hotel Room Block | 1d? | 2018-02-05 | 2018-02-05 |  |  |  |
| 56 |  | Finalize Hotel Room Block | 1d? | 2018-02-05 | 2018-02-05 |  |  |  |
| 57 |  | <New Task> | 1d? | 2018-02-05 | 2018-02-05 |  |  |  |
| 58 |  | <New Task> | 1d? | 2018-02-05 | 2018-02-05 |  |  |  |
| 59 |  | Day of Event (Thursday) | 1d | 2018-04-19 | 2018-04-19 |  |  |  |
| 60 |  | Day of Event (Friday) | 1d | 2018-04-20 | 2018-04-20 |  |  |  |

## Version 2 (saved 2018-02-07)

Note of the change: gantt

Last finish stays 2018-04-20.

Added:

| ID | Task | Duration | Start | Finish | Predecessors | Constraint | Resources |
| --- | --- | --- | --- | --- | --- | --- | --- |
| 25 | **Video** | 34d | 2018-02-13 | 2018-03-30 |  |  | Ben |
| 26 | Video - Finalize List of Video | 1d | 2018-02-13 | 2018-02-13 |  |  | Ben |
| 27 | Video - Meet with Videographer | 3d | 2018-02-19 | 2018-02-21 | 19, 26, 32 |  | Ben |
| 28 | Video - Pre-Event Shoots | 15d | 2018-03-12 | 2018-03-30 | 27 |  | Ben |
| 29 | Video - Logo Final Approval | 1d | 2018-02-27 | 2018-02-27 | 28 |  | Ben |
| 46 | **Marketing, Outeach, Communications** | 53d | 2018-02-05 | 2018-04-18 |  |  | Davon |
| 47 | **M&O- Marketing and Outreach** | 53d | 2018-02-05 | 2018-04-18 |  |  | Davon |
| 48 | **M&O Verbiage** | 13d | 2018-02-12 | 2018-02-28 |  |  | FRC Team |
| 49 | M&O- "Save the Date" Verbiage | 1d | 2018-02-12 | 2018-02-12 |  |  | Davon |
| 50 | M&O - "Save the Date" Release | 1d | 2018-02-14 | 2018-02-14 |  |  | FRC Team |
| 51 | M&O- Press Release | 11d | 2018-02-14 | 2018-02-28 |  |  | Davon; Simone |
| 52 | M&O- Blurbs, General (Bus., Uni., Comm.) | 11d | 2018-02-14 | 2018-02-28 |  |  | Ben |
| 53 | M&O- Social Media Verbiage | 11d | 2018-02-14 | 2018-02-28 |  |  | Ben |
| 54 | **M&O - Press Outeach** | 52d | 2018-02-06 | 2018-04-18 |  |  | Davon |
| 55 | M&O- Press List | 17d | 2018-02-06 | 2018-02-28 |  |  | Davon |
| 57 | M&O - Press Outeach 1 | 1d | 2018-03-01 | 2018-03-01 | 55 | start no earlier than 2018-02-28 | Davon |
| 58 | M&O - Press Outeach 2 | 1d | 2018-03-14 | 2018-03-14 |  | start no earlier than 2018-03-14 | Davon |
| 59 | M&O - Press Outeach 3 | 1d | 2018-03-28 | 2018-03-28 |  | start no earlier than 2018-03-28 | Davon |
| 60 | M&O - Press Outeach 4 | 1d | 2018-04-11 | 2018-04-11 |  | start no earlier than 2018-04-11 | Davon |
| 62 | M&O - Press Packets | 3d | 2018-04-16 | 2018-04-18 |  |  | Davon |
| 63 | **M&O - Regional University Outeach** | 51d | 2018-02-05 | 2018-04-16 |  |  | Dan |
| 65 | M&O- Regional University STD | 1d | 2018-02-14 | 2018-02-14 |  |  | Dan |
| 66 | M&O - Regional University Outeach 1 | 1d | 2018-03-01 | 2018-03-01 | 64 | start no earlier than 2018-02-28 | Dan |
| 67 | M&O - Regional University Outeach 2 | 1d | 2018-03-14 | 2018-03-14 |  | start no earlier than 2018-03-14 | Dan |
| 68 | M&O - Regional University Outeach 3 | 1d | 2018-03-28 | 2018-03-28 |  | start no earlier than 2018-03-28 | Dan |
| 69 | M&O - Regional University Outeach 4 | 1d | 2018-04-11 | 2018-04-11 |  | start no earlier than 2018-04-11 | Dan |
| 70 | M&O- Regional University Outreach 5 | 1d | 2018-04-16 | 2018-04-16 |  |  | Dan |
| 71 | **M&O- VT and NRV Outreach** | 48d | 2018-02-05 | 2018-04-11 |  |  | Dan; Davon |
| 73 | M&O- VT and NRV STD | 1d | 2018-02-14 | 2018-02-14 |  |  | Dan; Davon |
| 74 | M&O- VT and NRV Outreach 1 | 1d | 2018-03-01 | 2018-03-01 | 72 | start no earlier than 2018-02-28 | Dan; Davon |
| 75 | M&O- VT and NRV Outreach 2 | 1d | 2018-03-14 | 2018-03-14 |  | start no earlier than 2018-03-14 | Dan; Davon |
| 76 | M&O- VT and NRV Outreach 3 | 1d | 2018-03-28 | 2018-03-28 |  | start no earlier than 2018-03-28 | Dan; Davon |
| 77 | M&O- VT and NRV Outreach 4 | 1d | 2018-04-11 | 2018-04-11 |  | start no earlier than 2018-04-11 | Dan; Davon |
| 78 | **M&O- Business Outreach** | 48d | 2018-02-05 | 2018-04-11 |  |  | Simone |
| 80 | M&O- Business STD | 1d | 2018-02-14 | 2018-02-14 |  |  | Dan; Davon |
| 81 | M&O- Business Outreach 1 | 1d | 2018-03-01 | 2018-03-01 | 79 | start no earlier than 2018-02-28 | Simone |
| 82 | M&O- Business Outreach 2 | 1d | 2018-03-14 | 2018-03-14 |  | start no earlier than 2018-03-14 | Simone |
| 83 | M&O- Business Outreach 3 | 1d | 2018-03-28 | 2018-03-28 |  | start no earlier than 2018-03-28 | Simone |
| 84 | M&O- Business Outreach 4 | 1d | 2018-04-11 | 2018-04-11 |  | start no earlier than 2018-04-11 | Simone |
| 85 | **M&O - Social Media** | 48d | 2018-02-05 | 2018-04-11 |  |  | Ben |
| 86 | M&O- Social Media List and Acct. Creation | 18d | 2018-02-05 | 2018-02-28 |  |  | Ben |
| 87 | M&O- Social Media STD | 1d | 2018-02-14 | 2018-02-14 |  |  | Ben |
| 88 | M&O - Social Media 1 | 1d | 2018-02-28 | 2018-02-28 |  | start no earlier than 2018-02-28 | Ben |
| 89 | M&O - Social Media 2 | 1d | 2018-03-14 | 2018-03-14 |  | start no earlier than 2018-03-14 | Ben |
| 90 | M&O - Social Media 3 | 1d | 2018-03-28 | 2018-03-28 |  | start no earlier than 2018-03-28 | Ben |
| 91 | M&O - Social Media 4 | 1d | 2018-04-11 | 2018-04-11 |  | start no earlier than 2018-04-11 | Ben |
| 92 | **Co-Sponsors** | 17d | 2018-02-05 | 2018-02-27 |  |  | FRC Team |
| 93 | Co-Sponsor List | 1d | 2018-02-05 | 2018-02-05 |  |  | Dan; Simone; Davon |
| 94 | Co-Sponsor Letter | 1d | 2018-02-07 | 2018-02-07 |  |  | Davon |
| 95 | Co-Sponsor Outreach | 13d | 2018-02-09 | 2018-02-27 |  |  | Dan; Simone; Davon |
| 96 | **M&C - Communications** | 46d | 2018-02-14 | 2018-04-18 |  |  | Yao; Ben |
| 97 | M&C- Registration Reponses Verbiage | 10d | 2018-02-14 | 2018-02-27 |  |  | Yao |
| 98 | **M&C - Verbiage** | 27d | 2018-03-12 | 2018-04-17 |  |  | Yao; Ben |
| 99 | M&C - Verbiage 1 | 2d | 2018-03-12 | 2018-03-13 |  | start no earlier than 2018-03-12 | Yao; Ben |
| 100 | M&C - Verbiage 2 | 2d | 2018-03-19 | 2018-03-20 |  | start no earlier than 2018-03-19 | Yao; Ben |
| 101 | M&C - Verbiage 3 | 2d | 2018-03-26 | 2018-03-27 |  | start no earlier than 2018-03-26 | Yao; Ben |
| 102 | M&C - Verbiage 4 | 2d | 2018-04-02 | 2018-04-03 |  | start no earlier than 2018-04-02 | Yao; Ben |
| 103 | M&C - Verbiage 5 | 2d | 2018-04-09 | 2018-04-10 |  | start no earlier than 2018-04-09 | Yao; Ben |
| 104 | M&C - Verbiage 6 | 2d | 2018-04-16 | 2018-04-17 |  | start no earlier than 2018-04-16 | Yao; Ben |
| 105 | **M&C- SM/Email/Website Update Comm.** | 26d | 2018-03-14 | 2018-04-18 |  |  | Yao; Ben |
| 106 | M&C- SM/Email/Website Update Comm. 1 | 1d | 2018-03-14 | 2018-03-14 |  | start no earlier than 2018-03-14 | Yao; Ben |
| 107 | M&C- SM/Email/Website Update Comm. 2 | 1d | 2018-03-21 | 2018-03-21 |  | start no earlier than 2018-03-21 | Yao; Ben |
| 108 | M&C- SM/Email/Website Update Comm. 3 | 1d | 2018-03-28 | 2018-03-28 |  | start no earlier than 2018-03-28 | Yao; Ben |
| 109 | M&C- SM/Email/Website Update Comm. 4 | 1d | 2018-04-04 | 2018-04-04 |  | start no earlier than 2018-04-04 | Yao; Ben |
| 110 | M&C- SM/Email/Website Update Comm. 5 | 1d | 2018-04-11 | 2018-04-11 |  | start no earlier than 2018-04-11 | Yao; Ben |
| 111 | M&C- SM/Email/Website Update Comm. 6 | 1d | 2018-04-18 | 2018-04-18 |  | start no earlier than 2018-04-18 | Yao; Ben |
| 113 | FS- Reservation, Thursday Dinner | 1d | 2018-02-23 | 2018-02-23 |  |  | Christine |
| 114 | FS- Reservation, Thursday Dinner Final Count | 1d | 2018-04-02 | 2018-04-02 |  |  | Christine |
| 115 | FS - Food, Friday, Order | 1d | 2018-02-23 | 2018-02-23 |  |  | Christine |
| 116 | FS - Food, Friday, Final Count | 1d | 2018-04-02 | 2018-04-02 |  |  | Christine |
| 118 | HS - Hotel Block Reservation | 1d | 2018-02-23 | 2018-02-23 |  |  | Christine |

Removed: 28 <New Task>; 29 Meet with Designer; 33 Marketing and Communications; 44 Registration Report 9; 45 Registration Report 10; 47 Communications/Outreach; 53 <New Task>; 56 Finalize Hotel Room Block; 57 <New Task>; 58 <New Task>

Changed:

| ID | Task | Start | Finish | Duration | Total float | Predecessors | Other |
| --- | --- | --- | --- | --- | --- | --- | --- |
| 3 | Location - Reserve on Lyric |  | 2018-02-07 → 2018-02-09 (+2d) | 3d → 5d |  |  | was named Reserve on Lyric; resources Christine → Christine; Dan |
| 4 | Location -Site Visit |  |  |  |  |  | was named Site Visit |
| 5 | Location - Sign Contract |  |  |  |  |  | was named Sign Contract |
| 6 | **Summit Speakers** |  |  |  |  |  | resources none → Dan; Simone |
| 7 | Speakers - Round 1 Invitations |  |  |  |  |  | was named Round 1 Invitations |
| 8 | Speakers -Invitation Follow-up |  |  |  |  |  | was named Invitation Follow-up |
| 9 | Speakers - Round 2 Invitations |  |  |  |  |  | was named Round 2 Invitations |
| 10 | Speakers - Invitation Follow-up |  |  |  |  |  | was named Invitation Follow-up |
| 11 | Speakers -Round 3 Invitations |  |  |  |  |  | was named Round 3 Invitations |
| 12 | Speakers - Invitation Follow-up |  |  |  |  |  | was named Invitation Follow-up |
| 13 | Speakers -Speaker Travel Logisitics |  |  |  |  |  | was named Speaker Travel Logisitics |
| 14 | Speakers - Speaker Bios and Photos |  |  |  |  |  | was named Speaker Bios and Photos |
| 15 | **Media Design** |  | 2018-02-28 → 2018-03-30 (+30d) | 19d → 41d |  |  | resources none → FRC Team |
| 16 | **Contract Position Logistics** |  |  |  |  |  | resources none → Ben; Yao |
| 17 | Media - Web, Video and Grphx Job Descriptions |  |  |  |  |  | was named Web, Video and Grphx Job Descriptions |
| 18 | Media - Designer Submission |  |  |  |  |  | was named Designer Submission |
| 19 | Media -Designer Review and Selection |  |  |  |  |  | was named Designer Review and Selection |
| 20 | **Graphic Design** |  | 2018-02-27 → 2018-03-30 (+31d) | 11d → 34d |  | 19 → none |  |
| 21 | Graphic - Finalize List of Graphic Design Needs |  |  |  |  |  | was named Finalize List of Graphic Design Needs |
| 22 | Graphic - Meet with Designer |  |  |  |  |  | was named Meet with Designer |
| 23 | Graphic - Logo Design Process |  |  |  |  |  | was named Logo Design Process |
| 24 | Graphic - Logo Final Approval |  |  |  |  |  | was named Logo Final Approval |
| 30 | **Website Design** |  |  |  |  |  | resources none → FRC Team |
| 31 | Website - Domain Purchase |  |  |  |  |  | was named Domain Purchase |
| 32 | Website - Finalize List of Web Design Needs | 2018-02-13 → 2018-02-09 (-4d) | 2018-02-13 → 2018-02-09 (-4d) |  |  |  | was named Finalize List of Web Design Needs and Calendar; resources Ben → FRC Team |
| 33 | Website - Website Design Process | 2018-02-19 → 2018-02-12 (-7d) | 2018-02-27 → 2018-02-26 (-1d) | 7d → 11d |  | Meet with Designer → none | was named Website Design Process |
| 34 | Website - Website Final Approval |  |  |  |  |  | was named Website Final Approval |
| 36 | **Registration** | 2018-02-09 → 2018-02-21 (+12d) |  | 46d → 38d |  |  | was named Registration Process; resources none → Yao |
| 37 | Reg- Registration Form Finalization |  |  |  |  |  | was named Registration Form Finalization |
| 38 | **Reg- Registration Report** | 2018-02-09 → 2018-03-02 (+21d) |  | 46d → 31d |  | none → 37 | was named Registration Report |
| 39 | Reg- Registration Report 1 | 2018-02-09 → 2018-03-02 (+21d) | 2018-02-09 → 2018-03-02 (+21d) |  |  |  | was named Registration Report 1; constraint start no earlier than 2018-02-09 → start no earlier than 2018-03-02 |
| 40 | Reg- Registration Report 2 | 2018-02-16 → 2018-03-09 (+21d) | 2018-02-16 → 2018-03-09 (+21d) |  |  |  | was named Registration Report 2; constraint start no earlier than 2018-02-16 → start no earlier than 2018-03-09 |
| 41 | Reg- Registration Report 3 | 2018-02-23 → 2018-03-16 (+21d) | 2018-02-23 → 2018-03-16 (+21d) |  |  |  | was named Registration Report 3; constraint start no earlier than 2018-02-23 → start no earlier than 2018-03-16 |
| 42 | Reg- Registration Report 4 | 2018-03-02 → 2018-03-23 (+21d) | 2018-03-02 → 2018-03-23 (+21d) |  |  |  | was named Registration Report 4; constraint start no earlier than 2018-03-02 → start no earlier than 2018-03-23 |
| 43 | Reg- Registration Report 5 | 2018-03-16 → 2018-03-30 (+14d) | 2018-03-16 → 2018-03-30 (+14d) |  |  |  | was named Registration Report 6; constraint start no earlier than 2018-03-16 → start no earlier than 2018-03-30 |
| 44 | Reg- Registration Report 6 | 2018-03-23 → 2018-04-06 (+14d) | 2018-03-23 → 2018-04-06 (+14d) |  |  |  | was named Registration Report 7; constraint start no earlier than 2018-03-23 → start no earlier than 2018-04-06 |
| 45 | Reg- Registration Report 7 | 2018-03-30 → 2018-04-13 (+14d) | 2018-03-30 → 2018-04-13 (+14d) |  |  |  | was named Registration Report 8; constraint start no earlier than 2018-03-30 → start no earlier than 2018-04-13 |
| 56 | M&O- Advertising Plan | 2018-02-09 → 2018-02-06 (-3d) | 2018-02-09 → 2018-02-28 (+19d) | 1d? → 17d |  |  | was named Advertising Placement; resources none → Davon; Yao |
| 61 | M&O- Press Outeach 5 | 2018-02-09 → 2018-04-16 (+66d) | 2018-02-09 → 2018-04-16 (+66d) | 1d? → 1d |  |  | was named Public Relations; resources none → Davon |
| 64 | M&O- Regional University List | 2018-02-09 → 2018-02-05 (-4d) | 2018-02-09 → 2018-02-28 (+19d) | 1d? → 18d | none → 36d |  | was named University List; constraint none → start no earlier than 2018-02-05; resources none → Dan |
| 72 | M&O- VT and NRV List | 2018-02-09 → 2018-02-05 (-4d) | 2018-02-09 → 2018-02-28 (+19d) | 1d? → 18d |  |  | was named VT and NRV List; resources none → Dan; Davon |
| 79 | M&O- Business List | 2018-02-09 → 2018-02-05 (-4d) | 2018-02-09 → 2018-02-28 (+19d) | 1d? → 18d |  |  | was named Business List; resources none → Simone |
| 112 | **Food Services** | 2018-02-05 → 2018-02-23 (+18d) | 2018-02-05 → 2018-04-02 (+56d) | 1d? → 27d | none → 0d |  | resources none → Christine |
| 117 | **Hotel Services** | 2018-02-05 → 2018-02-23 (+18d) | 2018-02-05 → 2018-04-02 (+56d) | 1d? → 27d | none → 0d |  | resources none → Christine |
| 119 | HS- Hotel Block, Final Count | 2018-02-05 → 2018-04-02 (+56d) | 2018-02-05 → 2018-04-02 (+56d) | 1d? → 1d |  |  | was named Reserve Hotel Room Block; resources none → Christine |

## Version 3 (saved 2018-02-08)

Last finish stays 2018-04-20.

Added:

| ID | Task | Duration | Start | Finish | Predecessors | Resources |
| --- | --- | --- | --- | --- | --- | --- |
| 25 | Graphic - List of Graphic Design Needs 2 | 1d | 2018-04-09 | 2018-04-09 |  | Ben |
| 113 | **M&C - Print Services** | 11d | 2018-04-02 | 2018-04-16 |  |  |
| 114 | M&C - Print Services 1 | 10d | 2018-04-02 | 2018-04-13 | 26, 22, 21 | FRC Team; Christine |
| 115 | M&C - tchotchke selection | 4d | 2018-04-04 | 2018-04-09 |  | FRC Team; Ben |
| 116 | M&C - Print Services 2 | 4d | 2018-04-11 | 2018-04-16 |  | FRC Team; Ben |
| 125 | **Day of Event** | 2d | 2018-04-19 | 2018-04-20 |  | FRC Team |

Changed:

| ID | Task | Finish | Duration | Total float | Other |
| --- | --- | --- | --- | --- | --- |
| 15 | **Media Design** | 2018-03-30 → 2018-04-09 (+10d) | 41d → 47d |  |  |
| 20 | **Graphic Design** | 2018-03-30 → 2018-04-09 (+10d) | 34d → 40d |  |  |
| 21 | Graphic - List of Graphic Design Needs 1 |  |  |  | was named Graphic - Finalize List of Graphic Design Needs |
| 23 | Graphic - Graphic Design Process |  |  |  | was named Graphic - Logo Design Process |
| 24 | Graphic - Graphic Final Approval |  |  |  | was named Graphic - Logo Final Approval |
| 65 | M&O- Regional University List |  | 18d → 0d | 36d → none |  |
| 126 | DOE - Thursday |  |  |  | was named Day of Event (Thursday) |
| 127 | DOE - Friday |  |  |  | was named Day of Event (Friday) |

## Version 4 (saved 2018-02-09)

Last finish stays 2018-04-20.

Added:

| ID | Task | Duration | Start | Finish | Predecessors | Resources |
| --- | --- | --- | --- | --- | --- | --- |
| 6 | Location - Thursday Dinner | 1d | 2018-02-09 | 2018-02-09 |  | FRC Team |
| 117 | Attendee Packet Creation | 3d | 2018-04-17 | 2018-04-19 | 118, 116 | Ben; Dan; Davon; Simone; Yao |

Changed:

| ID | Task | Start | Finish | Duration | Predecessors | Other |
| --- | --- | --- | --- | --- | --- | --- |
| 15 | Speakers - Speaker Bios and Photos |  |  |  |  | resources Dan and Simone → Dan; Simone |
| 21 | **Graphic Design** | 2018-02-13 → 2018-02-09 (-4d) |  | 40d → 42d |  |  |
| 22 | Graphic - List of Graphic Design Needs 1 | 2018-02-13 → 2018-02-09 (-4d) | 2018-02-13 → 2018-02-09 (-4d) |  |  |  |
| 27 | **Video** | 2018-02-13 → 2018-02-16 (+3d) |  | 34d → 31d |  |  |
| 28 | Video - Finalize List of Video | 2018-02-13 → 2018-02-16 (+3d) | 2018-02-13 → 2018-02-16 (+3d) |  |  |  |
| 48 | **Marketing, Outeach, Communications** |  | 2018-04-18 → 2018-04-19 (+1d) | 53d → 54d |  |  |
| 58 | M&O- Advertising Plan | 2018-02-06 → 2018-02-28 (+22d) | 2018-02-28 → 2018-03-08 (+8d) | 17d → 7d | none → 22 |  |
| 98 | **M&C - Communications** |  | 2018-04-18 → 2018-04-19 (+1d) | 46d → 47d |  |  |
| 100 | **M&C - Verbiage** | 2018-03-12 → 2018-03-09 (-3d) | 2018-04-17 → 2018-04-16 (-1d) |  |  | resources Yao; Ben → Yao; Ben; FRC Team |
| 101 | M&C - Verbiage 1 | 2018-03-12 → 2018-03-09 (-3d) | 2018-03-13 → 2018-03-12 (-1d) |  |  | constraint start no earlier than 2018-03-12 → start no earlier than 2018-03-09; resources Yao; Ben → Yao; Ben; FRC Team |
| 102 | M&C - Verbiage 2 | 2018-03-19 → 2018-03-16 (-3d) | 2018-03-20 → 2018-03-19 (-1d) |  |  | constraint start no earlier than 2018-03-19 → start no earlier than 2018-03-16; resources Yao; Ben → Yao; Ben; FRC Team |
| 103 | M&C - Verbiage 3 | 2018-03-26 → 2018-03-23 (-3d) | 2018-03-27 → 2018-03-26 (-1d) |  |  | constraint start no earlier than 2018-03-26 → start no earlier than 2018-03-23; resources Yao; Ben → Yao; Ben; FRC Team |
| 104 | M&C - Verbiage 4 | 2018-04-02 → 2018-03-30 (-3d) | 2018-04-03 → 2018-04-02 (-1d) |  |  | constraint start no earlier than 2018-04-02 → start no earlier than 2018-03-30; resources Yao; Ben → Yao; Ben; FRC Team |
| 105 | M&C - Verbiage 5 | 2018-04-09 → 2018-04-06 (-3d) | 2018-04-10 → 2018-04-09 (-1d) |  |  | constraint start no earlier than 2018-04-09 → start no earlier than 2018-04-06; resources Yao; Ben → Yao; Ben; FRC Team |
| 106 | M&C - Verbiage 6 | 2018-04-16 → 2018-04-13 (-3d) | 2018-04-17 → 2018-04-16 (-1d) |  |  | constraint start no earlier than 2018-04-16 → start no earlier than 2018-04-13; resources Yao; Ben → Yao; Ben; FRC Team |
| 107 | **M&C- SM/Email/Website Update Comm.** | 2018-03-14 → 2018-03-13 (-1d) |  | 26d → 27d |  |  |
| 108 | M&C- SM/Email/Website Update Comm. 1 | 2018-03-14 → 2018-03-13 (-1d) |  | 1d → 2d | none → 101 |  |
| 109 | M&C- SM/Email/Website Update Comm. 2 | 2018-03-21 → 2018-03-20 (-1d) |  | 1d → 2d | none → 102 |  |
| 110 | M&C- SM/Email/Website Update Comm. 3 | 2018-03-28 → 2018-03-27 (-1d) |  | 1d → 2d | none → 103 |  |
| 111 | M&C- SM/Email/Website Update Comm. 4 | 2018-04-04 → 2018-04-03 (-1d) |  | 1d → 2d | none → 104 |  |
| 112 | M&C- SM/Email/Website Update Comm. 5 | 2018-04-11 → 2018-04-10 (-1d) |  | 1d → 2d | none → 105 |  |
| 113 | M&C- SM/Email/Website Update Comm. 6 | 2018-04-18 → 2018-04-17 (-1d) |  | 1d → 2d | none → 106 |  |
| 114 | **M&C - Print Services** | 2018-04-02 → 2018-03-21 (-12d) | 2018-04-16 → 2018-04-19 (+3d) | 11d → 22d |  |  |
| 116 | M&C - tchotchke selection | 2018-04-04 → 2018-03-21 (-14d) | 2018-04-09 → 2018-03-26 (-14d) |  |  |  |
| 118 | M&C - Print Services 2 | 2018-04-11 → 2018-04-02 (-9d) |  | 4d → 11d | none → 15 |  |
| 119 | **Food Services** |  | 2018-04-02 → 2018-04-13 (+11d) | 27d → 36d |  |  |
| 120 | FS- Reservation, Thursday Dinner |  |  |  | none → 6 |  |
| 121 | FS- Reservation, Thursday Dinner Final Count | 2018-04-02 → 2018-04-13 (+11d) | 2018-04-02 → 2018-04-13 (+11d) |  | none → 47 |  |
| 123 | FS - Food, Friday, Final Count | 2018-04-02 → 2018-04-13 (+11d) | 2018-04-02 → 2018-04-13 (+11d) |  | none → 47 |  |
| 124 | **Hotel Services** |  | 2018-04-02 → 2018-04-13 (+11d) | 27d → 36d |  |  |
| 126 | HS- Hotel Block, Final Count | 2018-04-02 → 2018-04-13 (+11d) | 2018-04-02 → 2018-04-13 (+11d) |  | none → 47 |  |
